# Year 3 Project Plan 7 30

Schedule from MS Project, 2008-07-14 to 2008-10-24, A marks actual dates.
Persistent Systems Pvt. Ltd.

## Calendars

- Standard: Mon-Fri 08:00-12:00, 13:00-17:00; Sat-Sun off. Exceptions (off unless hours are given): 2008-08-15 (Holiday).

## Resources

| Resource |
| --- |
| Chandrakant Talele |
| Lalit Chand |
| Chetan Patil |
| Atul Jawale |
| Hrishikesh Rajpathak |
| Rushikesh Subhedar |
| Deepak Shingan |
| Madhumita |

## Schedule

| ID | WBS | Task | Duration | Start | Finish | Predecessors | Complete | Remaining | Total slack | Constraint | Resources | Work | Actual work |
| --- | --- | --- | --- | --- | --- | --- | --- | --- | --- | --- | --- | --- | --- |
| 1 | 1 | **Year 3 Release1** | 74d? | 2008-07-14 A | 2008-10-24 |  | 92% | 5.59d? | 0d |  |  | 2064h | 1938h |
| 2 | 1.1 | **caB2B_Y3_020Technology Stack Migration** | 34d | 2008-07-14 A | 2008-08-29 A |  | 100% |  |  |  |  | 144h | 144h |
| 3 | 1.1.1 | **Migrate to Jboss 4.0.5 GA** | 2d | 2008-07-14 A | 2008-07-15 A |  | 100% |  |  |  |  | 16h | 16h |
| 4 | 1.1.1.1 | Changes in existing codebase | 1d | 2008-07-14 A | 2008-07-14 A |  | 100% |  |  | start no earlier than 2008-07-14 | Lalit Chand | 8h | 8h |
| 5 | 1.1.1.2 | Changes in deployment process | 1d | 2008-07-15 A | 2008-07-15 A | 4 | 100% |  |  |  | Lalit Chand | 8h | 8h |
| 6 | 1.1.2 | **Query Module** | 12d | 2008-08-04 A | 2008-08-20 A |  | 100% |  |  |  |  | 88h | 88h |
| 7 | 1.1.2.1 | Query Module Release UI | 3d | 2008-08-18 A | 2008-08-20 A |  | 100% |  |  |  | Deepak Shingan | 24h | 24h |
| 8 | 1.1.2.2 | Query Module Release backend changes | 8d | 2008-08-04 A | 2008-08-20 A |  | 100% |  |  |  | Chetan Patil | 64h | 64h |
| 9 | 1.1.3 | **Moving to caGrid 1.2** | 5d | 2008-08-25 A | 2008-08-29 A |  | 100% |  |  |  |  | 40h | 40h |
| 10 | 1.1.3.1 | caB2B Finding & Replacing appropriate jars | 2d | 2008-08-25 A | 2008-08-26 A |  | 100% |  |  | start no earlier than 2008-08-25 | Deepak Shingan | 16h | 16h |
| 11 | 1.1.3.2 | Admin Finding & Replacing appropriate jars | 2d | 2008-08-27 A | 2008-08-28 A | 10 | 100% |  |  |  | Deepak Shingan | 16h | 16h |
| 12 | 1.1.3.3 | Testing | 1d | 2008-08-29 A | 2008-08-29 A | 11 | 100% |  |  |  | Deepak Shingan | 8h | 8h |
| 13 | 1.2 | **caB2B_Y3_001-Automatic cache update between admin and cab2b server** | 22d | 2008-09-01 A | 2008-09-30 A |  | 100% |  |  |  |  | 176h | 176h |
| 14 | 1.2.1 | Requirement | 1d | 2008-09-01 A | 2008-09-01 A | 63 | 100% |  |  |  | Hrishikesh Rajpathak | 8h | 8h |
| 15 | 1.2.2 | **Investigation** | 18d | 2008-09-02 A | 2008-09-25 A | 14 | 100% |  |  |  |  | 144h | 144h |
| 16 | 1.2.2.1 | Investigate Component | 14d | 2008-09-02 A | 2008-09-19 A | 14 | 100% |  |  | finish no earlier than 2008-09-19 | Hrishikesh Rajpathak | 112h | 112h |
| 17 | 1.2.2.2 | Developing Prototype | 2d | 2008-09-22 A | 2008-09-23 A | 16 | 100% |  |  |  | Hrishikesh Rajpathak | 16h | 16h |
| 18 | 1.2.2.3 | Design | 2d | 2008-09-24 A | 2008-09-25 A | 17 | 100% |  |  |  | Hrishikesh Rajpathak | 16h | 16h |
| 19 | 1.2.3 | **Implementation** | 3d | 2008-09-26 A | 2008-09-30 A | 15 | 100% |  |  |  |  | 24h | 24h |
| 20 | 1.2.3.1 | Separating out Implementation Deployment Unit | 2d | 2008-09-26 A | 2008-09-29 A |  | 100% |  |  |  | Hrishikesh Rajpathak | 16h | 16h |
| 21 | 1.2.3.2 | Changes needed in Deployment Process | 1d | 2008-09-30 A | 2008-09-30 A | 20 | 100% |  |  |  | Hrishikesh Rajpathak | 8h | 8h |
| 22 | 1.3 | **Representing grid user in caB2B** | 40d | 2008-08-07 A | 2008-10-02 A |  | 100% |  |  |  |  | 144h | 144h |
| 23 | 1.3.1 | Investigating APIs needed | 4d | 2008-08-07 A | 2008-08-12 A |  | 100% |  |  |  | Lalit Chand | 32h | 32h |
| 24 | 1.3.2 | Design to store user identity locally | 10d | 2008-09-15 A | 2008-09-26 A | 23 | 100% |  |  |  | Lalit Chand | 80h | 80h |
| 25 | 1.3.3 | Design review by external parties | 4d | 2008-09-29 A | 2008-10-02 A | 24 | 100% |  |  |  | Lalit Chand | 32h | 32h |

| ID | WBS | Task | Duration | Start | Finish | Predecessors | Complete | Constraint | Resources | Work | Actual work |
| --- | --- | --- | --- | --- | --- | --- | --- | --- | --- | --- | --- |
| 26 | 1.4 | **caB2B_Y3_002-User based experiments** | 12d | 2008-10-03 A | 2008-10-20 A |  | 100% |  |  | 96h | 96h |
| 27 | 1.4.1 | Requirement | 1d | 2008-10-03 A | 2008-10-03 A | 25 | 100% |  | Lalit Chand | 8h | 8h |
| 28 | 1.4.2 | Design | 2d | 2008-10-06 A | 2008-10-07 A | 27 | 100% |  | Lalit Chand | 16h | 16h |
| 29 | 1.4.3 | **Implementation** | 9d | 2008-10-08 A | 2008-10-20 A | 28 | 100% |  |  | 72h | 72h |
| 30 | 1.4.3.1 | Saving experiments on user basis | 3d | 2008-10-08 A | 2008-10-10 A |  | 100% |  | Lalit Chand | 24h | 24h |
| 31 | 1.4.3.2 | Changes needed at client-server interface to pass user info | 3d | 2008-10-13 A | 2008-10-15 A | 30 | 100% |  | Lalit Chand | 24h | 24h |
| 32 | 1.4.3.3 | Fetch and display experiments based on user | 3d | 2008-10-16 A | 2008-10-20 A | 31 | 100% |  | Lalit Chand | 24h | 24h |
| 33 | 1.5 | **caB2B_Y3_003-User based saved queries** | 11d | 2008-10-03 A | 2008-10-17 A | 22 | 100% |  |  | 88h | 88h |
| 34 | 1.5.1 | Requirement | 1d | 2008-10-03 A | 2008-10-03 A |  | 100% |  | Chetan Patil | 8h | 8h |
| 35 | 1.5.2 | Design | 4d | 2008-10-06 A | 2008-10-09 A | 34 | 100% |  | Chetan Patil | 32h | 32h |
| 36 | 1.5.3 | **Implementation** | 6d | 2008-10-10 A | 2008-10-17 A |  | 100% |  |  | 48h | 48h |
| 37 | 1.5.3.1 | Saving queries on user basis | 3d | 2008-10-10 A | 2008-10-14 A | 35 | 100% |  | Chetan Patil | 24h | 24h |
| 38 | 1.5.3.2 | Changes needed at client-server interface to pass user info | 3d | 2008-10-15 A | 2008-10-17 A | 37 | 100% |  | Chetan Patil | 24h | 24h |
| 39 | 1.6 | **caB2B_Y3_006-Home page experiments links functional + show all** | 12d | 2008-07-14 A | 2008-07-29 A |  | 100% |  |  | 96h | 96h |
| 40 | 1.6.1 | Requirement | 1d | 2008-07-14 A | 2008-07-14 A |  | 100% | start no earlier than 2008-07-14 | Deepak Shingan | 8h | 8h |
| 41 | 1.6.2 | UI Mockups | 1d | 2008-07-15 A | 2008-07-15 A | 40 | 100% |  | Deepak Shingan | 8h | 8h |
| 42 | 1.6.3 | Design | 1d | 2008-07-16 A | 2008-07-16 A | 41 | 100% |  | Deepak Shingan | 8h | 8h |
| 43 | 1.6.4 | **Implementation** | 9d | 2008-07-17 A | 2008-07-29 A |  | 100% |  |  | 72h | 72h |
| 44 | 1.6.4.1 | Showing recent experiments | 2d | 2008-07-17 A | 2008-07-18 A | 42 | 100% |  | Deepak Shingan | 16h | 16h |
| 45 | 1.6.4.2 | Making links in stack box funtional | 2d | 2008-07-21 A | 2008-07-22 A | 44 | 100% |  | Deepak Shingan | 16h | 16h |
| 46 | 1.6.4.3 | Show All to display all experiments on right side | 3d | 2008-07-23 A | 2008-07-25 A | 45 | 100% |  | Deepak Shingan | 24h | 24h |
| 47 | 1.6.4.4 | Click on any experiment from show all table to open experiment | 2d | 2008-07-28 A | 2008-07-29 A | 46 | 100% |  | Deepak Shingan | 16h | 16h |
| 48 | 1.7 | **caB2B_Y3_007-Home page category links functional + show all** | 12d | 2008-07-30 A | 2008-08-14 A |  | 100% |  |  | 96h | 96h |
| 49 | 1.7.1 | Requirement | 1d | 2008-07-30 A | 2008-07-30 A | 39 | 100% |  | Deepak Shingan | 8h | 8h |
| 50 | 1.7.2 | UI Mockups | 1d | 2008-07-31 A | 2008-07-31 A | 49 | 100% |  | Deepak Shingan | 8h | 8h |
| 51 | 1.7.3 | Design | 1d | 2008-08-01 A | 2008-08-01 A | 50 | 100% |  | Deepak Shingan | 8h | 8h |

| ID | WBS | Task | Duration | Start | Finish | Predecessors | Complete | Constraint | Resources | Work | Actual work |
| --- | --- | --- | --- | --- | --- | --- | --- | --- | --- | --- | --- |
| 52 | 1.7.4 | **Implementation** | 9d | 2008-08-04 A | 2008-08-14 A |  | 100% |  |  | 72h | 72h |
| 53 | 1.7.4.1 | Showing all categories | 2d | 2008-08-04 A | 2008-08-05 A | 51 | 100% |  | Deepak Shingan | 16h | 16h |
| 54 | 1.7.4.2 | Clicking on category in stack box to open add limit page | 2d | 2008-08-06 A | 2008-08-07 A | 53 | 100% |  | Deepak Shingan | 16h | 16h |
| 55 | 1.7.4.3 | Show All to display all categories on right side | 3d | 2008-08-08 A | 2008-08-12 A | 54 | 100% |  | Deepak Shingan | 24h | 24h |
| 56 | 1.7.4.4 | Click on any category from show all table to open it in add limit page | 2d | 2008-08-13 A | 2008-08-14 A | 55 | 100% |  | Deepak Shingan | 16h | 16h |
| 57 | 1.8 | **caB2B_Y3_008-Popular categories** | 24d | 2008-07-28 A | 2008-08-29 A |  | 100% |  |  | 184h | 184h |
| 58 | 1.8.1 | Requirement | 8d | 2008-07-28 A | 2008-08-06 A |  | 100% | start no earlier than 2008-07-28 | Hrishikesh Rajpathak | 64h | 64h |
| 59 | 1.8.2 | Design | 5d | 2008-08-07 A | 2008-08-14 A | 58 | 100% | finish no earlier than 2008-08-14 | Hrishikesh Rajpathak | 40h | 40h |
| 60 | 1.8.3 | **Implementation** | 10d | 2008-08-18 A | 2008-08-29 A |  | 100% |  |  | 80h | 80h |
| 61 | 1.8.3.1 | Calculating popularity | 3d | 2008-08-18 A | 2008-08-20 A | 59 | 100% |  | Hrishikesh Rajpathak | 24h | 24h |
| 62 | 1.8.3.2 | Storing and using popularity | 4d | 2008-08-21 A | 2008-08-26 A | 61 | 100% | finish no earlier than 2008-08-08 | Hrishikesh Rajpathak | 32h | 32h |
| 63 | 1.8.3.3 | Unit Testing | 3d | 2008-08-27 A | 2008-08-29 A | 62 | 100% |  | Hrishikesh Rajpathak | 24h | 24h |
| 64 | 1.9 | **caB2B_Y3_009-Fixing the current washU services for index service** | 21d | 2008-07-14 A | 2008-08-11 A |  | 100% |  |  | 168h | 168h |
| 65 | 1.9.1 | Learning service, discovery and metadata | 5d | 2008-07-14 A | 2008-07-18 A |  | 100% |  | Atul Jawale | 40h | 40h |
| 66 | 1.9.2 | Finding the cause | 5d | 2008-07-21 A | 2008-07-25 A | 65 | 100% |  | Atul Jawale | 40h | 40h |
| 67 | 1.9.3 | Investigating on fixes / solutions | 5d | 2008-07-28 A | 2008-08-01 A | 66 | 100% |  | Atul Jawale | 40h | 40h |
| 68 | 1.9.4 | Fixing Services | 6d | 2008-08-04 A | 2008-08-11 A | 67 | 100% |  | Atul Jawale | 48h | 48h |
| 69 | 1.10 | **caArray caTissue Integration Bug# 8780** | 6d | 2008-08-27 A | 2008-09-03 A |  | 100% |  |  | 48h | 48h |
| 70 | 1.10.1 | Investigation | 2d | 2008-08-27 A | 2008-08-28 A | 112 | 100% |  | Chetan Patil | 16h | 16h |
| 71 | 1.10.2 | Testing Patch | 2d | 2008-08-29 A | 2008-09-01 A | 70 | 100% |  | Chetan Patil | 16h | 16h |
| 72 | 1.10.3 | Pushing patch into WashU instance | 2d | 2008-09-02 A | 2008-09-03 A | 71 | 100% |  | Chetan Patil | 16h | 16h |
| 73 | 1.11 | **Exposing DCQL’s on the User Interface** | 25d | 2008-08-28 A | 2008-10-01 A |  | 100% |  |  | 184h | 184h |
| 74 | 1.11.1 | Requirement | 1d | 2008-08-28 A | 2008-08-28 A | 147 | 100% | finish no earlier than 2008-09-16 | Chetan Patil | 8h | 8h |
| 75 | 1.11.2 | Learning CQL | 5d | 2008-08-29 A | 2008-09-04 A | 74 | 100% |  | Lalit Chand | 40h | 40h |
| 76 | 1.11.3 | Understanding existing implementation | 4d | 2008-09-09 A | 2008-09-12 A | 75 | 100% |  | Chetan Patil | 32h | 32h |
| 77 | 1.11.4 | UI mockups | 1d | 2008-09-22 A | 2008-09-22 A |  | 100% | finish no earlier than 2008-09-22 | Atul Jawale | 8h | 8h |
| 78 | 1.11.5 | Design | 2d | 2008-09-23 A | 2008-09-24 A | 77 | 100% |  | Atul Jawale; Chetan Patil | 32h | 32h |

| ID | WBS | Task | Duration | Start | Finish | Predecessors | Complete | Total slack | Free slack | Constraint | Resources | Work | Actual work |
| --- | --- | --- | --- | --- | --- | --- | --- | --- | --- | --- | --- | --- | --- |
| 79 | 1.11.6 | **Implementation** | 5d | 2008-09-25 A | 2008-10-01 A |  | 100% |  |  |  |  | 64h | 64h |
| 80 | 1.11.6.1 | UI implementation | 4d | 2008-09-25 A | 2008-09-30 A | 78 | 100% |  |  | start no earlier than 2008-09-09 | Atul Jawale | 32h | 32h |
| 81 | 1.11.6.2 | Backend integration | 4d | 2008-09-26 A | 2008-10-01 A | 80 | 100% |  |  |  | Chetan Patil | 32h | 32h |
| 82 | 1.12 | **caB2B_Y3_005-User to override the URLs** | 16d | 2008-08-13 A | 2008-09-04 A |  | 100% |  |  |  |  | 128h | 128h |
| 83 | 1.12.1 | Requirement | 1d | 2008-08-13 A | 2008-08-13 A |  | 100% |  |  |  | Atul Jawale | 8h | 8h |
| 84 | 1.12.2 | UI mockups | 1d | 2008-08-14 A | 2008-08-14 A | 83 | 100% |  |  |  | Atul Jawale | 8h | 8h |
| 85 | 1.12.3 | Design | 1d | 2008-08-18 A | 2008-08-18 A | 84 | 100% |  |  |  | Atul Jawale | 8h | 8h |
| 86 | 1.12.4 | **Implementation** | 13d | 2008-08-19 A | 2008-09-04 A | 85 | 100% |  |  |  |  | 104h | 104h |
| 87 | 1.12.4.1 | UI implementation | 5d | 2008-08-19 A | 2008-08-25 A | 85 | 100% |  |  | finish no earlier than 2008-09-17 | Atul Jawale | 40h | 40h |
| 88 | 1.12.4.2 | Backend integration | 3d | 2008-08-26 A | 2008-08-28 A |  | 100% |  |  | start no earlier than 2008-09-18 | Atul Jawale | 24h | 24h |
| 89 | 1.12.4.3 | Unit testing | 2d | 2008-09-03 A | 2008-09-04 A | 90 | 100% |  |  |  | Atul Jawale | 16h | 16h |
| 90 | 1.12.4.4 | UE enhanements | 3d | 2008-08-29 A | 2008-09-02 A | 88 | 100% |  |  |  | Atul Jawale | 24h | 24h |
| 91 | 1.13 | **Showing results of a query grouped by the services** | 5d? | 2008-09-29 | 2008-10-03 |  |  | 15d |  |  |  | 24h |  |
| 92 | 1.13.1 | Requirement | 1d | 2008-09-29 | 2008-09-29 |  |  | 15d | 0d | start no earlier than 2008-09-29 | Chandrakant Talele | 8h |  |
| 93 | 1.13.2 | UI mockups | 1d | 2008-09-30 | 2008-09-30 | 92 |  | 15d | 0d |  | Chandrakant Talele | 8h |  |
| 94 | 1.13.3 | Design | 1d? | 2008-10-01 | 2008-10-01 | 93 |  | 15d | 0d |  | Chandrakant Talele | 8h |  |
| 95 | 1.13.4 | **Implementation** | 2d? | 2008-10-02 | 2008-10-03 |  |  | 15d |  |  |  |  |  |
| 96 | 1.13.4.1 | UI implementation | 1d? | 2008-10-02 | 2008-10-02 | 94 |  | 15d | 0d |  |  |  |  |
| 97 | 1.13.4.2 | Backend integration | 1d? | 2008-10-03 | 2008-10-03 | 96 |  | 15d |  |  |  |  |  |
| 98 | 1.14 | **Shipping of metadata along with installer** | 6d | 2008-09-29 A | 2008-10-06 A |  | 100% |  |  |  |  | 48h | 48h |
| 99 | 1.14.1 | Changes in installation script | 1d | 2008-09-29 A | 2008-09-29 A |  | 100% |  |  | start no earlier than 2008-09-29 | Chandrakant Talele | 8h | 8h |
| 100 | 1.14.2 | updating installation manuals | 1d | 2008-09-30 A | 2008-09-30 A | 99 | 100% |  |  |  | Chandrakant Talele | 8h | 8h |
| 101 | 1.14.3 | Write ant target | 1d | 2008-10-01 A | 2008-10-01 A | 100 | 100% |  |  |  | Hrishikesh Rajpathak | 8h | 8h |
| 102 | 1.14.4 | Update installation guide, update caB2B website | 3d | 2008-10-02 A | 2008-10-06 A | 101 | 100% |  |  | finish no earlier than 2008-10-06 | Hrishikesh Rajpathak | 24h | 24h |
| 103 | 1.15 | Knowledge Transfer from Deepak | 11d | 2008-09-05 A | 2008-09-19 A | 102 | 100% |  |  | start no earlier than 2008-09-05 | Atul Jawale; Deepak Shingan | 176h | 176h |

Notes:
- 87: Requirement changed by Mukesh on 10th sep(on weekly status call)

| ID | WBS | Task | Duration | Start | Finish | Predecessors | Complete | Remaining | Total slack | Free slack | Constraint | Resources | Work | Actual work |
| --- | --- | --- | --- | --- | --- | --- | --- | --- | --- | --- | --- | --- | --- | --- |
| 104 | 1.16 | **Service url at step 3 of search data wizard** | 8d | 2008-09-17 A | 2008-09-26 A |  | 100% |  |  |  |  |  | 64h | 64h |
| 105 | 1.16.1 | Service URL analysis | 2d | 2008-09-17 A | 2008-09-18 A |  | 100% |  |  |  | start no earlier than 2008-09-17 | Atul Jawale | 16h | 16h |
| 106 | 1.16.2 | Service URL UI updation | 2d | 2008-09-19 A | 2008-09-22 A | 105 | 100% |  |  |  |  | Atul Jawale | 16h | 16h |
| 107 | 1.16.3 | Service URL backend change and integration | 4d | 2008-09-23 A | 2008-09-26 A | 106 | 100% |  |  |  |  | Atul Jawale | 32h | 32h |
| 108 | 1.17 | **Bugs Fixing** | 36d | 2008-07-31 A | 2008-09-19 |  | 83% | 6d | 21.86d | 7d |  |  | 80h | 80h |
| 109 | 1.17.1 | Bug# 8070 | 2d | 2008-07-31 A | 2008-08-01 A | 153 | 100% |  |  |  | start no earlier than 2008-08-04 | Chetan Patil | 16h | 16h |
| 110 | 1.17.2 | caTissue core service instance | 1d | 2008-08-12 A | 2008-08-12 A | 68 | 100% |  |  |  | start no earlier than 2008-08-08 | Atul Jawale | 8h | 8h |
| 111 | 1.17.3 | Bug 9090 & 9138 fix | 2d | 2008-08-21 A | 2008-08-22 A | 8 | 100% |  |  |  |  | Chetan Patil | 16h | 16h |
| 112 | 1.17.4 | Bug 9221 fix | 2d | 2008-08-25 A | 2008-08-26 A | 111 | 100% |  |  |  |  | Chetan Patil | 16h | 16h |
| 113 | 1.17.5 | Bug # 8911 | 1d | 2008-09-04 A | 2008-09-04 A | 72 | 100% |  |  |  |  | Chetan Patil | 8h | 8h |
| 114 | 1.17.6 | Bug # 8814 | 1d | 2008-09-05 A | 2008-09-05 A | 113 | 100% |  |  |  |  | Chetan Patil | 8h | 8h |
| 115 | 1.17.7 | Bug # 8839 | 1d | 2008-09-08 A | 2008-09-08 A | 114 | 100% |  |  |  |  | Chetan Patil | 8h | 8h |
| 116 | 1.17.8 | Bug # 9604 | 2d | 2008-09-18 | 2008-09-19 |  |  |  | 16d |  | start no earlier than 2008-09-18 |  |  |  |
| 117 | 1.18 | **QA cycle-Internal release 1** | 15d | 2008-10-01 A | 2008-10-21 | 13, 26, 33, 39, 48, 57, 64, 69, 73, 108, 82 | 86% | 2.14d | 1d |  |  | Madhumita | 120h | 18h |
| 118 | 1.18.1 | Test cases writing | 3d | 2008-10-01 A | 2008-10-03 A |  | 100% |  |  |  | finish no earlier than 2008-10-03 |  |  |  |
| 119 | 1.18.2 | Test case execution | 3d | 2008-10-07 A | 2008-10-09 A | 118 | 100% |  |  |  |  |  |  |  |
| 120 | 1.18.3 | Bug verification | 1d | 2008-10-21 | 2008-10-21 | 119 |  |  | 1d |  |  |  |  |  |
| 121 | 1.19 | **Documents** | 33d | 2008-09-08 A | 2008-10-22 |  | 48% | 17.02d | 0d |  |  |  |  |  |
| 122 | 1.19.1 | Requirements | 3d | 2008-10-06 A | 2008-10-08 |  | 40% | 1.8d | 2d | 0d | start no earlier than 2008-10-06 |  |  |  |
| 123 | 1.19.2 | cab2b design document | 5d | 2008-10-09 | 2008-10-15 | 122 |  |  | 2d | 0d |  |  |  |  |
| 124 | 1.19.3 | caB2B user manual | 5d | 2008-10-16 A | 2008-10-22 | 123 | 40% | 3d | 0d |  |  |  |  |  |
| 125 | 1.19.4 | Use cases writing | 6d | 2008-09-08 A | 2008-09-15 A |  | 100% |  |  |  | start no earlier than 2008-09-08 |  |  |  |
| 126 | 1.20 | Release Activity | 2d | 2008-10-23 | 2008-10-24 | 117, 124 |  |  | 0d |  |  |  |  |  |
| 127 | 2 | **Year 3 Release2** | 43d? | 2008-07-14 A | 2008-09-11 |  | 14% | 37.03d? | 31d |  |  |  | 160h | 160h |
| 128 | 2.1 | **caB2B_Y3_004-Asynchronous execution of queries** | 1d? | 2008-07-14 | 2008-07-14 |  |  |  | 73d |  |  |  |  |  |
| 129 | 2.1.1 | Requirement | 1d? | 2008-07-14 | 2008-07-14 |  |  |  | 73d |  |  |  |  |  |
| 130 | 2.1.2 | Design | 1d? | 2008-07-14 | 2008-07-14 |  |  |  | 73d |  |  |  |  |  |

| ID | WBS | Task | Duration | Start | Finish | Predecessors | Complete | Remaining | Total slack | Free slack | Resources | Work | Actual work |
| --- | --- | --- | --- | --- | --- | --- | --- | --- | --- | --- | --- | --- | --- |
| 131 | 2.1.3 | **Implementation** | 1d? | 2008-07-14 | 2008-07-14 |  |  |  | 73d |  |  |  |  |
| 132 | 2.1.3.1 | Represent schedule | 1d? | 2008-07-14 | 2008-07-14 |  |  |  | 73d |  |  |  |  |
| 133 | 2.1.3.2 | Storing schedule and firing jobs | 1d? | 2008-07-14 | 2008-07-14 |  |  |  | 73d |  |  |  |  |
| 134 | 2.1.3.3 | Implementing job for query execution | 1d? | 2008-07-14 | 2008-07-14 |  |  |  | 73d |  |  |  |  |
| 135 | 2.2 | **caB2B_Y3_012-Asynchronous of save data list** | 1d? | 2008-07-14 | 2008-07-14 |  |  |  | 73d |  |  |  |  |
| 136 | 2.2.1 | Requirement | 1d? | 2008-07-14 | 2008-07-14 |  |  |  | 73d |  |  |  |  |
| 137 | 2.2.2 | Investigation | 1d? | 2008-07-14 | 2008-07-14 |  |  |  | 73d |  |  |  |  |
| 138 | 2.2.3 | Investigate Component | 1d? | 2008-07-14 | 2008-07-14 |  |  |  | 73d |  |  |  |  |
| 139 | 2.2.4 | Developing Prototype | 1d? | 2008-07-14 | 2008-07-14 |  |  |  | 73d |  |  |  |  |
| 140 | 2.2.5 | Design | 1d? | 2008-07-14 | 2008-07-14 |  |  |  | 73d |  |  |  |  |
| 141 | 2.2.6 | **Implementation** | 1d? | 2008-07-14 | 2008-07-14 |  |  |  | 73d |  |  |  |  |
| 142 | 2.2.6.1 | Separating out Implementation Deployment Unit | 1d? | 2008-07-14 | 2008-07-14 |  |  |  | 73d |  |  |  |  |
| 143 | 2.2.6.2 | Changes needed in Deployment Process | 1d? | 2008-07-14 | 2008-07-14 |  |  |  | 73d |  |  |  |  |
| 144 | 2.3 | **caB2B_Y3_016-Support basic analytical services (support for ICR services, if needed, do customizations)** | 43d? | 2008-07-14 A | 2008-09-11 |  | 6% | 40.39d? | 31d |  |  | 32h | 32h |
| 145 | 2.3.1 | **Requirement** | 43d? | 2008-07-14 A | 2008-09-11 |  | 6% | 40.39d? | 31d |  |  | 32h | 32h |
| 146 | 2.3.1.1 | **Investigation** | 22d? | 2008-07-14 A | 2008-08-12 |  | 67% | 7.33d? | 52d |  |  | 32h | 32h |
| 147 | 2.3.1.1.1 | Investigating APIs needed | 4d | 2008-08-07 A | 2008-08-12 A |  | 100% |  |  |  | Lalit Chand | 32h | 32h |
| 148 | 2.3.1.1.2 | Design to store user identity locally | 1d? | 2008-07-14 | 2008-07-14 |  |  |  | 73d |  |  |  |  |
| 149 | 2.3.1.1.3 | Design review by external parties | 1d? | 2008-07-14 | 2008-07-14 |  |  |  | 73d |  |  |  |  |
| 150 | 2.3.1.2 | Investigate Component | 1d? | 2008-07-14 | 2008-07-14 |  |  |  | 73d |  |  |  |  |
| 151 | 2.3.1.3 | Developing Prototype | 37d | 2008-07-14 | 2008-09-03 |  |  |  | 31d | 0d |  |  |  |
| 152 | 2.3.1.4 | **Schedular** | 7d | 2008-07-14 | 2008-07-22 |  |  |  | 58d |  |  |  |  |
| 153 | 2.3.1.4.1 | Investigate Component | 2d | 2008-07-14 | 2008-07-15 |  |  |  | 58d | 0d |  |  |  |
| 154 | 2.3.1.4.2 | Developing Prototype | 5d | 2008-07-16 | 2008-07-22 | 153 |  |  | 58d | 0d |  |  |  |

| ID | WBS | Task | Duration | Start | Finish | Predecessors | Total slack | Free slack |
| --- | --- | --- | --- | --- | --- | --- | --- | --- |
| 155 | 2.3.1.5 | **Notification** | 9d | 2008-07-23 | 2008-08-04 |  | 58d |  |
| 156 | 2.3.1.5.1 | UI mockup | 1d | 2008-07-23 | 2008-07-23 | 154 | 58d | 0d |
| 157 | 2.3.1.5.2 | UI implementation | 3d | 2008-07-24 | 2008-07-28 | 156 | 58d | 0d |
| 158 | 2.3.1.5.3 | Backend Implementation | 5d | 2008-07-29 | 2008-08-04 | 157 | 58d |  |
| 159 | 2.3.1.6 | **Design** | 3d? | 2008-09-04 | 2008-09-08 | 151 | 31d |  |
| 160 | 2.3.1.6.1 | Implementation | 1d? | 2008-09-04 | 2008-09-04 |  | 31d | 0d |
| 161 | 2.3.1.6.2 | Separating out Implementation Deployment Unit | 1d? | 2008-09-05 | 2008-09-05 | 160 | 31d | 0d |
| 162 | 2.3.1.6.3 | Changes needed in Deployment Process | 1d? | 2008-09-08 | 2008-09-08 | 161 | 31d | 0d |
| 163 | 2.3.1.7 | **Representing grid user in caB2B** | 3d? | 2008-09-09 | 2008-09-11 | 162 | 31d |  |
| 164 | 2.3.1.7.1 | Expansion of categories | 1d? | 2008-09-09 | 2008-09-09 |  | 31d | 0d |
| 165 | 2.3.1.7.2 | Schedular component + notification functionality | 1d? | 2008-09-10 | 2008-09-10 | 164 | 31d | 0d |
| 166 | 2.4 | **caB2B_Y3_017-Viewers for supported analytical services** | 1d? | 2008-07-14 | 2008-07-14 |  | 73d |  |
| 167 | 2.4.1 | Requirement | 1d? | 2008-07-14 | 2008-07-14 |  | 73d |  |
| 168 | 2.4.2 | **Investigation** | 1d? | 2008-07-14 | 2008-07-14 |  | 73d |  |
| 169 | 2.4.2.1 | Investigate Component | 1d? | 2008-07-14 | 2008-07-14 |  | 73d |  |
| 170 | 2.4.2.2 | Developing Prototype | 1d? | 2008-07-14 | 2008-07-14 |  | 73d |  |
| 171 | 2.4.2.3 | Design | 1d? | 2008-07-14 | 2008-07-14 |  | 73d |  |
| 172 | 2.4.3 | **Implementation** | 1d? | 2008-07-14 | 2008-07-14 |  | 73d |  |
| 173 | 2.4.3.1 | Separating out Implementation Deployment Unit | 1d? | 2008-07-14 | 2008-07-14 |  | 73d |  |
| 174 | 2.4.3.2 | Changes needed in Deployment Process | 1d? | 2008-07-14 | 2008-07-14 |  | 73d |  |
| 175 | 2.5 | **caB2B_Y3_015-Support for getting probe data from caArray. For CEL files no need to bring data back to cab2b server, just get the URL and send it to analytical service** | 1d? | 2008-07-14 | 2008-07-14 |  | 73d |  |
| 176 | 2.5.1 | Requirement | 1d? | 2008-07-14 | 2008-07-14 |  | 73d |  |
| 177 | 2.5.2 | Investigation | 1d? | 2008-07-14 | 2008-07-14 |  | 73d |  |
| 178 | 2.5.3 | Investigate Component | 1d? | 2008-07-14 | 2008-07-14 |  | 73d |  |
| 179 | 2.5.4 | Developing Prototype | 1d? | 2008-07-14 | 2008-07-14 |  | 73d |  |
| 180 | 2.5.5 | Design | 1d? | 2008-07-14 | 2008-07-14 |  | 73d |  |

| ID | WBS | Task | Duration | Start | Finish | Complete | Remaining | Total slack | Work | Actual work |
| --- | --- | --- | --- | --- | --- | --- | --- | --- | --- | --- |
| 181 | 2.5.6 | **Implementation** | 1d? | 2008-07-14 | 2008-07-14 |  |  | 73d |  |  |
| 182 | 2.5.6.1 | Separating out Implementation Deployment Unit | 1d? | 2008-07-14 | 2008-07-14 |  |  | 73d |  |  |
| 183 | 2.5.6.2 | Changes needed in Deployment Process | 1d? | 2008-07-14 | 2008-07-14 |  |  | 73d |  |  |
| 184 | 2.6 | **caB2B_Y3_014-Experiments with multiple datalists, edit expr to add data list with way to re-query (more likely)** | 1d? | 2008-07-14 | 2008-07-14 |  |  | 73d |  |  |
| 185 | 2.6.1 | Requirement | 1d? | 2008-07-14 | 2008-07-14 |  |  | 73d |  |  |
| 186 | 2.6.2 | UI Mockups | 1d? | 2008-07-14 | 2008-07-14 |  |  | 73d |  |  |
| 187 | 2.6.3 | Design | 1d? | 2008-07-14 | 2008-07-14 |  |  | 73d |  |  |
| 188 | 2.6.4 | **Implementation** | 1d? | 2008-07-14 | 2008-07-14 |  |  | 73d |  |  |
| 189 | 2.6.4.1 | UI for data list viewer | 1d? | 2008-07-14 | 2008-07-14 |  |  | 73d |  |  |
| 190 | 2.6.4.2 | Changes needed in Experiment module | 1d? | 2008-07-14 | 2008-07-14 |  |  | 73d |  |  |
| 191 | 2.6.4.3 | backend support for multiple data list | 1d? | 2008-07-14 | 2008-07-14 |  |  | 73d |  |  |
| 192 | 2.7 | **caB2B_Y3_013-intermodel joins for a group like washU, NCICB , Intermodel joins with pair of service instances** | 1d? | 2008-07-14 | 2008-07-14 |  |  | 73d |  |  |
| 193 | 2.7.1 | Requirement | 1d? | 2008-07-14 | 2008-07-14 |  |  | 73d |  |  |
| 194 | 2.7.2 | Investigation | 1d? | 2008-07-14 | 2008-07-14 |  |  | 73d |  |  |
| 195 | 2.7.3 | Investigate Component | 1d? | 2008-07-14 | 2008-07-14 |  |  | 73d |  |  |
| 196 | 2.7.4 | Developing Prototype | 1d? | 2008-07-14 | 2008-07-14 |  |  | 73d |  |  |
| 197 | 2.7.5 | Design | 1d? | 2008-07-14 | 2008-07-14 |  |  | 73d |  |  |
| 198 | 2.7.6 | **Implementation** | 1d? | 2008-07-14 | 2008-07-14 |  |  | 73d |  |  |
| 199 | 2.7.6.1 | Separating out Implementation Deployment Unit | 1d? | 2008-07-14 | 2008-07-14 |  |  | 73d |  |  |
| 200 | 2.7.6.2 | Changes needed in Deployment Process | 1d? | 2008-07-14 | 2008-07-14 |  |  | 73d |  |  |
| 201 | 2.8 | **caB2B_Y3_020Technology Stack Migration** | 18d | 2008-07-14 A | 2008-08-06 | 40% | 10.8d | 56d | 128h | 128h |
| 202 | 2.8.1 | **New DE release** | 10d | 2008-07-14 | 2008-07-25 |  |  | 64d |  |  |
| 203 | 2.8.1.1 | Understand new design and identify changes | 2d | 2008-07-14 | 2008-07-15 |  |  | 72d |  |  |
| 204 | 2.8.1.2 | Changs in cab2B and Admin | 10d | 2008-07-14 | 2008-07-25 |  |  | 64d |  |  |
| 205 | 2.8.1.3 | Verification | 4d | 2008-07-14 | 2008-07-17 |  |  | 70d |  |  |

| ID | WBS | Task | Duration | Start | Finish | Predecessors | Complete | Total slack | Resources | Work | Actual work |
| --- | --- | --- | --- | --- | --- | --- | --- | --- | --- | --- | --- |
| 206 | 2.8.2 | **Java 1.5** | 5d | 2008-07-14 | 2008-07-18 |  |  | 69d |  |  |  |
| 207 | 2.8.2.1 | Identify changes for java 1.5 | 5d | 2008-07-14 | 2008-07-18 |  |  | 69d |  |  |  |
| 208 | 2.8.2.2 | Solution for client side java 6 components | 3d | 2008-07-14 | 2008-07-16 |  |  | 71d |  |  |  |
| 209 | 2.8.3 | **Migrate to EJB 3.0** | 16d | 2008-07-16 A | 2008-08-06 A |  | 100% |  |  | 128h | 128h |
| 210 | 2.8.3.1 | Understanding EJB 3.0 | 5d | 2008-07-16 A | 2008-07-22 A | 5 | 100% |  | Lalit Chand | 40h | 40h |
| 211 | 2.8.3.2 | Changes in existing codebase | 3d | 2008-07-23 A | 2008-07-25 A | 210 | 100% |  | Lalit Chand | 24h | 24h |
| 212 | 2.8.3.3 | Changes in deployment process | 1d | 2008-07-28 A | 2008-07-28 A | 211 | 100% |  | Lalit Chand | 8h | 8h |
| 213 | 2.8.3.4 | Testing | 4d | 2008-07-29 A | 2008-08-01 A | 212 | 100% |  | Lalit Chand | 32h | 32h |
| 214 | 2.8.3.5 | Verification | 3d | 2008-08-04 A | 2008-08-06 A | 213 | 100% |  | Lalit Chand | 24h | 24h |
| 215 | 3 | **Year 3 Release3** | 1d? | 2008-07-14 | 2008-07-14 |  |  | 73d |  |  |  |
| 216 | 3.1 | **caB2B_Y3_010-Support WS enumerations data services** | 1d? | 2008-07-14 | 2008-07-14 |  |  | 73d |  |  |  |
| 217 | 3.1.1 | Requirement | 1d? | 2008-07-14 | 2008-07-14 |  |  | 73d |  |  |  |
| 218 | 3.1.2 | Investigation | 1d? | 2008-07-14 | 2008-07-14 |  |  | 73d |  |  |  |
| 219 | 3.1.3 | **Investigate Component** | 1d? | 2008-07-14 | 2008-07-14 |  |  | 73d |  |  |  |
| 220 | 3.1.3.1 | Developing Prototype | 1d? | 2008-07-14 | 2008-07-14 |  |  | 73d |  |  |  |
| 221 | 3.1.3.2 | **Design** | 1d? | 2008-07-14 | 2008-07-14 |  |  | 73d |  |  |  |
| 222 | 3.1.3.2.1 | Implementation | 1d? | 2008-07-14 | 2008-07-14 |  |  | 73d |  |  |  |
| 223 | 3.1.3.2.2 | Separating out Implementation Deployment Unit | 1d? | 2008-07-14 | 2008-07-14 |  |  | 73d |  |  |  |
| 224 | 3.1.3.3 | Changes needed in Deployment Process | 1d? | 2008-07-14 | 2008-07-14 |  |  | 73d |  |  |  |
| 225 | 3.2 | **caB2B_Y3_019-Intermodel joins with multiple attributes** | 1d? | 2008-07-14 | 2008-07-14 |  |  | 73d |  |  |  |
| 226 | 3.2.1 | Requirement | 1d? | 2008-07-14 | 2008-07-14 |  |  | 73d |  |  |  |
| 227 | 3.2.2 | **Investigation** | 1d? | 2008-07-14 | 2008-07-14 |  |  | 73d |  |  |  |
| 228 | 3.2.2.1 | Investigate Component | 1d? | 2008-07-14 | 2008-07-14 |  |  | 73d |  |  |  |
| 229 | 3.2.2.2 | Developing Prototype | 1d? | 2008-07-14 | 2008-07-14 |  |  | 73d |  |  |  |
| 230 | 3.2.3 | Design | 1d? | 2008-07-14 | 2008-07-14 |  |  | 73d |  |  |  |

| ID | WBS | Task | Duration | Start | Finish | Total slack |
| --- | --- | --- | --- | --- | --- | --- |
| 231 | 3.2.4 | **Implementation** | 1d? | 2008-07-14 | 2008-07-14 | 73d |
| 232 | 3.2.4.1 | Separating out Implementation Deployment Unit | 1d? | 2008-07-14 | 2008-07-14 | 73d |
| 233 | 3.2.4.2 | Changes needed in Deployment Process | 1d? | 2008-07-14 | 2008-07-14 | 73d |
| 234 | 3.3 | **Advanced result view** | 1d? | 2008-07-14 | 2008-07-14 | 73d |
| 235 | 3.3.1 | Understanding requirement | 1d? | 2008-07-14 | 2008-07-14 | 73d |
| 236 | 3.3.2 | UI mock ups | 1d? | 2008-07-14 | 2008-07-14 | 73d |
| 237 | 3.3.3 | Design | 1d? | 2008-07-14 | 2008-07-14 | 73d |
| 238 | 3.3.4 | **UI implementation** | 1d? | 2008-07-14 | 2008-07-14 | 73d |
| 239 | 3.3.4.1 | Changes on define result view(step 3 of wizard) | 1d? | 2008-07-14 | 2008-07-14 | 73d |
| 240 | 3.3.4.2 | Changes in the advanced view result | 1d? | 2008-07-14 | 2008-07-14 | 73d |
| 241 | 3.3.5 | **Backend implementation** | 1d? | 2008-07-14 | 2008-07-14 | 73d |
| 242 | 3.3.5.1 | query changes to get all the objects asked in the result view | 1d? | 2008-07-14 | 2008-07-14 | 73d |
| 243 | 3.3.5.2 | changes in datalist | 1d? | 2008-07-14 | 2008-07-14 | 73d |
| 244 | 3.4 | Metadata that has been searched for should be highlighted in the Add Limit panel. | 1d? | 2008-07-14 | 2008-07-14 | 73d |
| 245 | 3.5 | Expansion of categories to create category across different applications | 1d? | 2008-07-14 | 2008-07-14 | 73d |
| 246 | 3.6 | **caB2B_Y3_018-Returning result of a federated query even if only one of the instances is failed** | 1d? | 2008-07-14 | 2008-07-14 | 73d |
| 247 | 3.6.1 | Requirement | 1d? | 2008-07-14 | 2008-07-14 | 73d |
| 248 | 3.6.2 | Investigation | 1d? | 2008-07-14 | 2008-07-14 | 73d |
| 249 | 3.6.3 | Investigate Component | 1d? | 2008-07-14 | 2008-07-14 | 73d |
| 250 | 3.6.4 | **Developing Prototype** | 1d? | 2008-07-14 | 2008-07-14 | 73d |
| 251 | 3.6.4.1 | Design | 1d? | 2008-07-14 | 2008-07-14 | 73d |
| 252 | 3.6.5 | **Implementation** | 1d? | 2008-07-14 | 2008-07-14 | 73d |
| 253 | 3.6.5.1 | Separating out Implementation Deployment Unit | 1d? | 2008-07-14 | 2008-07-14 | 73d |
| 254 | 3.6.5.2 | Changes needed in Deployment Process | 1d? | 2008-07-14 | 2008-07-14 | 73d |

Notes:
- 234: Use case: User has created a query and now wants to add a new class without any limits, just to fetch this additional associated information. / For example, while finding the GBM specimens user wants to know under what collection protocol the samples were collected. / The result view should also be a more user friendly view where classes are represented in a tree like format.

| ID | WBS | Task | Duration | Start | Finish | Total slack |
| --- | --- | --- | --- | --- | --- | --- |
| 255 | 3.7 | **QA cycle** | 1d? | 2008-07-14 | 2008-07-14 | 73d |
| 256 | 3.7.1 | Writing testcases for new functionalities | 1d? | 2008-07-14 | 2008-07-14 | 73d |
| 257 | 3.7.2 | Build 1 for QA | 1d? | 2008-07-14 | 2008-07-14 | 73d |
| 258 | 3.7.3 | Testing Build 1 | 1d? | 2008-07-14 | 2008-07-14 | 73d |
| 259 | 3.7.4 | Fix bugs reported in Build 1 | 1d? | 2008-07-14 | 2008-07-14 | 73d |
| 260 | 3.7.5 | Demo to washU users | 1d? | 2008-07-14 | 2008-07-14 | 73d |
| 261 | 3.7.6 | Build 2 for QA | 1d? | 2008-07-14 | 2008-07-14 | 73d |
| 262 | 3.7.7 | Testing of Build 2 (by QA + washU users) | 1d? | 2008-07-14 | 2008-07-14 | 73d |
| 263 | 3.7.8 | Regression Testing | 1d? | 2008-07-14 | 2008-07-14 | 73d |
| 264 | 3.7.9 | Fix bugs reported in (Build 2 + regression testing) | 1d? | 2008-07-14 | 2008-07-14 | 73d |
| 265 | 3.8 | **Release Candidate 1** | 1d? | 2008-07-14 | 2008-07-14 | 73d |
| 266 | 3.8.1 | Release to QA + washU users for accepatance | 1d? | 2008-07-14 | 2008-07-14 | 73d |
| 267 | 3.8.2 | Verification of fixed bugs | 1d? | 2008-07-14 | 2008-07-14 | 73d |
| 268 | 3.8.3 | UAT by QA + washU users | 1d? | 2008-07-14 | 2008-07-14 | 73d |
| 269 | 3.8.4 | UAT bug fixing | 1d? | 2008-07-14 | 2008-07-14 | 73d |
| 270 | 3.9 | **Release activities** | 1d? | 2008-07-14 | 2008-07-14 | 73d |
| 271 | 3.9.1 | Updating washU servers | 1d? | 2008-07-14 | 2008-07-14 | 73d |
| 272 | 3.9.2 | Updating G-forge | 1d? | 2008-07-14 | 2008-07-14 | 73d |
| 273 | 3.9.3 | Updating website (cab2b.wustl.edu) | 1d? | 2008-07-14 | 2008-07-14 | 73d |
| 274 | 3.9.4 | Updating caBIG Tools Page | 1d? | 2008-07-14 | 2008-07-14 | 73d |
| 275 | 3.10 | **Documentation** | 1d? | 2008-07-14 | 2008-07-14 | 73d |
| 276 | 3.10.1 | Admin end user manual | 1d? | 2008-07-14 | 2008-07-14 | 73d |
| 277 | 3.10.2 | Admin design document | 1d? | 2008-07-14 | 2008-07-14 | 73d |
| 278 | 3.10.3 | Update design document | 1d? | 2008-07-14 | 2008-07-14 | 73d |
| 279 | 3.10.4 | Update end user manual update | 1d? | 2008-07-14 | 2008-07-14 | 73d |
| 280 | 3.10.5 | Documentation Review | 1d? | 2008-07-14 | 2008-07-14 | 73d |
| 281 | 3.10.6 | Review by NCICB Leads | 1d? | 2008-07-14 | 2008-07-14 | 73d |
| 282 | 3.10.7 | D&T Review | 1d? | 2008-07-14 | 2008-07-14 | 73d |
| 283 | 3.11 | Final Documentation | 1d? | 2008-07-14 | 2008-07-14 | 73d |
